# Construction schedule v1.0

Schedule from an IFC model, 2027-03-01 to 2027-06-25.
Cycle Tunnel, Arnhem Station

## Schedule

| ID | Activity | Type | Duration | Start | Finish | Predecessors | Planned start | Planned finish | Total float | Free float |
| --- | --- | --- | --- | --- | --- | --- | --- | --- | --- | --- |
| 1 | **1. Preparation** |  | 27d | 2027-03-01 | 2027-04-02 |  | 2027-03-01 | 2027-03-05 | 0d |  |
| 1.1 | Divert cables and pipes |  | 8d | 2027-03-01 | 2027-03-09 |  | 2027-03-01 | 2027-03-10 | 0d |  |
| 1.2 | Plan track possessions |  | 3d | 2027-03-10 | 2027-03-12 | 1.1 | 2027-03-01 | 2027-03-03 | 68d | 0d |
| 1.3 | Install sheet piling |  | 10d | 2027-03-13 | 2027-03-24 | 1.2 | 2027-03-01 | 2027-03-12 | 68d | 0d |
| 1.4 | Set up site |  | 5d | 2027-03-25 | 2027-04-01 | 1.3 | 2027-03-01 | 2027-03-05 | 68d | 0d |
| 1.5 | Start of construction | milestone | 0d | 2027-04-02 | 2027-04-02 | 1.4 | 2027-03-01 | 2027-03-01 | 68d |  |
| 2 | **2. Excavation pit** |  | 33d | 2027-03-16 | 2027-04-24 |  | 2027-03-01 | 2027-03-05 | 0d |  |
| 2.1 | Install struts |  | 5d | 2027-03-16 | 2027-03-20 | 1.1 SS+13d | 2027-03-01 | 2027-03-05 | 0d |  |
| 2.2 | Excavation, phase 1 |  | 10d | 2027-03-22 | 2027-04-03 | 2.1 | 2027-03-01 | 2027-03-12 | 49d | 0d |
| 2.3 | Excavation, phase 2 |  | 8d | 2027-04-05 | 2027-04-13 | 2.2 | 2027-03-01 | 2027-03-10 | 49d | 0d |
| 2.4 | Groundwater dewatering |  | 5d | 2027-04-14 | 2027-04-19 | 2.3 | 2027-03-01 | 2027-03-05 | 49d | 0d |
| 2.5 | Underwater concrete |  | 5d | 2027-04-20 | 2027-04-24 | 2.4 | 2027-03-01 | 2027-03-05 | 49d |  |
| 3 | **3. Tunnel structure** |  | 36d | 2027-03-18 | 2027-05-01 |  | 2027-03-01 | 2027-03-05 | 0d |  |
| 3.1 | Tunnel box floor |  | 8d | 2027-03-18 | 2027-03-27 | 2.1 SS | 2027-03-01 | 2027-03-10 | 0d |  |
| 3.2 | Tunnel box walls |  | 10d | 2027-03-30 | 2027-04-09 | 3.1 | 2027-03-01 | 2027-03-12 | 0d |  |
| 3.3 | Tunnel box roof |  | 8d | 2027-04-10 | 2027-04-19 | 3.2 | 2027-03-01 | 2027-03-10 | 0d |  |
| 3.4 | Waterproofing |  | 5d | 2027-04-20 | 2027-04-24 | 3.3 | 2027-03-01 | 2027-03-05 | 0d |  |
| 3.5 | Backfill and compact |  | 5d | 2027-04-26 | 2027-05-01 | 3.4 | 2027-03-01 | 2027-03-05 | 0d |  |
| 4 | **4. Approach ramps** |  | 16d | 2027-04-23 | 2027-05-14 |  | 2027-03-01 | 2027-03-05 | 0d |  |
| 4.1 | North approach ramp, concrete works |  | 8d | 2027-04-23 | 2027-05-03 | 3.5 FS-7d | 2027-03-01 | 2027-03-10 | 0d |  |
| 4.2 | South approach ramp, concrete works |  | 8d | 2027-04-28 | 2027-05-08 | 4.1 SS+3d | 2027-03-01 | 2027-03-10 | 0d |  |
| 4.3 | Cycle path ramp |  | 5d | 2027-05-10 | 2027-05-14 | 4.2, 3.5 FF+2d | 2027-03-01 | 2027-03-05 | 0d |  |
| 5 | **5. Building services & finishing** |  | 26d | 2027-05-15 | 2027-06-15 |  | 2027-03-01 | 2027-03-05 | 0d |  |
| 5.1 | Tunnel lighting |  | 5d | 2027-05-15 | 2027-05-21 | 4.3 | 2027-03-01 | 2027-03-05 | 0d |  |
| 5.2 | Pump installation |  | 5d | 2027-05-22 | 2027-05-27 | 5.1 | 2027-03-01 | 2027-03-05 | 0d |  |
| 5.3 | Ventilation |  | 3d | 2027-05-28 | 2027-05-31 | 5.2 | 2027-03-01 | 2027-03-03 | 0d |  |
| 5.4 | Tiling and wall finishes |  | 8d | 2027-06-01 | 2027-06-09 | 5.3 | 2027-03-01 | 2027-03-10 | 0d |  |
| 5.5 | Cycle path asphalt |  | 3d | 2027-06-10 | 2027-06-12 | 5.4 | 2027-03-01 | 2027-03-03 | 0d |  |
| 5.6 | Signage |  | 2d | 2027-06-14 | 2027-06-15 | 5.5 | 2027-03-01 | 2027-03-02 | 0d |  |

| ID | Activity | Type | Duration | Start | Finish | Predecessors | Planned start | Planned finish | Total float |
| --- | --- | --- | --- | --- | --- | --- | --- | --- | --- |
| 6 | **6. Handover** |  | 9d | 2027-06-16 | 2027-06-25 |  | 2027-03-01 | 2027-03-05 | 0d |
| 6.1 | Reinstate track |  | 5d | 2027-06-16 | 2027-06-21 | 5.6 | 2027-03-01 | 2027-03-05 | 0d |
| 6.2 | Testing and inspection |  | 3d | 2027-06-22 | 2027-06-24 | 6.1 | 2027-03-01 | 2027-03-03 | 0d |
| 6.3 | Tunnel open to traffic | milestone | 0d | 2027-06-25 | 2027-06-25 | 6.2 | 2027-03-01 | 2027-03-01 | 0d |
