# Construction schedule v1.0

Schedule from an IFC model, 2027-03-01 to 2027-09-18.
N279 Bridge Replacement

## Schedule

| ID | Activity | Type | Duration | Start | Finish | Predecessors | Planned start | Planned finish | Total float | Free float | Resources |
| --- | --- | --- | --- | --- | --- | --- | --- | --- | --- | --- | --- |
| 1 | **1. Preparation & diversions** |  | 22d | 2027-03-01 | 2027-03-25 |  | 2027-03-01 | 2027-03-05 | 0d |  |  |
| 1.1 | Implement traffic management |  | 5d | 2027-03-01 | 2027-03-05 |  |  |  | 0d |  | Traffic management contractor |
| 1.2 | Temporary diversion route |  | 8d | 2027-03-06 | 2027-03-15 | 1.1 | 2027-03-01 | 2027-03-10 | 128d | 0d | Traffic management contractor |
| 1.3 | Set up site |  | 5d | 2027-03-16 | 2027-03-20 | 1.2 | 2027-03-01 | 2027-03-05 | 128d | 0d |  |
| 1.4 | Impose shipping restrictions |  | 3d | 2027-03-22 | 2027-03-24 | 1.3 | 2027-03-01 | 2027-03-03 | 128d | 0d |  |
| 1.5 | Start of works | milestone | 0d | 2027-03-25 | 2027-03-25 | 1.4 | 2027-03-01 | 2027-03-01 | 128d |  |  |
| 2 | **2. Demolition of old bridge** |  | 37d | 2027-03-13 | 2027-04-28 |  | 2027-03-01 | 2027-03-05 | 0d |  |  |
| 2.1 | Divert services |  | 8d | 2027-03-13 | 2027-03-22 | 1.1 SS+11d | 2027-03-01 | 2027-03-10 | 0d |  |  |
| 2.2 | Remove asphalt |  | 3d | 2027-03-23 | 2027-03-25 | 2.1 | 2027-03-01 | 2027-03-03 | 102d | 0d | Demolition contractor |
| 2.3 | Remove bridge railings |  | 3d | 2027-03-27 | 2027-03-31 | 2.2 | 2027-03-01 | 2027-03-03 | 102d | 0d | Demolition contractor |
| 2.4 | Demolish bridge deck |  | 10d | 2027-04-01 | 2027-04-12 | 2.3 | 2027-03-01 | 2027-03-12 | 102d | 0d | Demolition contractor; Crawler crane 250 t |
| 2.5 | Demolish abutments |  | 8d | 2027-04-13 | 2027-04-21 | 2.4 | 2027-03-01 | 2027-03-10 | 102d | 0d | Demolition contractor |
| 2.6 | Remove rubble |  | 5d | 2027-04-22 | 2027-04-28 | 2.5 | 2027-03-01 | 2027-03-05 | 102d |  | Demolition contractor |
| 3 | **3. New foundations** |  | 40d | 2027-03-17 | 2027-05-07 |  | 2027-03-01 | 2027-03-05 | 0d |  |  |
| 3.1 | Drive sheet piling |  | 10d | 2027-03-17 | 2027-03-30 | 2.1 SS | 2027-03-01 | 2027-03-12 | 0d |  | Piling rig |
| 3.2 | Underwater concrete |  | 8d | 2027-03-31 | 2027-04-08 | 3.1 | 2027-03-01 | 2027-03-10 | 0d |  | Concrete C35/45 |
| 3.3 | Dewater excavation pit |  | 5d | 2027-04-09 | 2027-04-14 | 3.2 | 2027-03-01 | 2027-03-05 | 0d |  |  |
| 3.4 | Bore pile foundation |  | 12d | 2027-04-15 | 2027-04-29 | 3.3 | 2027-03-01 | 2027-03-16 | 0d |  | Piling rig |
| 3.5 | Ground improvement |  | 5d | 2027-04-30 | 2027-05-07 | 3.4 | 2027-03-01 | 2027-03-05 | 0d |  |  |
| 4 | **4. Concrete structure** |  | 68d | 2027-04-26 | 2027-07-17 |  | 2027-03-01 | 2027-03-05 | 0d |  |  |
| 4.1 | West abutment: rebar and pour |  | 15d | 2027-04-26 | 2027-05-15 | 3.5 FS-8d | 2027-03-01 | 2027-03-19 | 0d |  | Steel fixers; Concrete crew; Concrete C35/45 |
| 4.2 | East abutment: rebar and pour |  | 15d | 2027-05-03 | 2027-05-22 | 4.1 SS+5d | 2027-03-01 | 2027-03-19 | 0d |  | Steel fixers; Concrete crew; Concrete C35/45 |
| 4.3 | Pour central pier |  | 10d | 2027-05-24 | 2027-06-03 | 4.2 | 2027-03-01 | 2027-03-12 | 0d |  | Concrete crew; Concrete C35/45 |
| 4.4 | Place precast beams |  | 8d | 2027-06-04 | 2027-06-12 | 4.3 | 2027-03-01 | 2027-03-10 | 0d |  | Crawler crane 250 t; Concrete crew |
| 4.5 | Bridge deck reinforcement |  | 10d | 2027-06-14 | 2027-06-24 | 4.4 | 2027-03-01 | 2027-03-12 | 0d |  | Steel fixers |
| 4.6 | Pour bridge deck |  | 5d | 2027-06-25 | 2027-06-30 | 4.5 | 2027-03-01 | 2027-03-05 | 0d |  | Concrete crew; Concrete C35/45 |
| 4.7 | Concrete curing |  | 15d | 2027-07-01 | 2027-07-17 | 4.6, 3.5 FF+2d | 2027-03-01 | 2027-03-19 | 0d |  |  |

| ID | Activity | Type | Duration | Start | Finish | Predecessors | Planned start | Planned finish | Total float | Resources |
| --- | --- | --- | --- | --- | --- | --- | --- | --- | --- | --- |
| 5 | **5. Finishing** |  | 24d | 2027-07-19 | 2027-09-04 |  | 2027-03-01 | 2027-03-05 | 0d |  |
| 5.1 | Install bridge railings |  | 5d | 2027-07-19 | 2027-07-23 | 4.7 | 2027-03-01 | 2027-03-05 | 0d | Concrete crew |
| 5.2 | Bridge deck waterproofing |  | 5d | 2027-07-24 | 2027-08-19 | 5.1 | 2027-03-01 | 2027-03-05 | 0d |  |
| 5.3 | Asphalt bridge deck |  | 3d | 2027-08-20 | 2027-08-23 | 5.2 | 2027-03-01 | 2027-03-03 | 0d | Asphalt contractor |
| 5.4 | Asphalt tie-ins |  | 5d | 2027-08-24 | 2027-08-28 | 5.3 | 2027-03-01 | 2027-03-05 | 0d | Asphalt contractor |
| 5.5 | Lighting |  | 3d | 2027-08-30 | 2027-09-01 | 5.4 | 2027-03-01 | 2027-03-03 | 0d |  |
| 5.6 | Crash barrier |  | 3d | 2027-09-02 | 2027-09-04 | 5.5 | 2027-03-01 | 2027-03-03 | 0d |  |
| 6 | **6. Handover** |  | 12d | 2027-09-06 | 2027-09-18 |  | 2027-03-01 | 2027-03-05 | 0d |  |
| 6.1 | Load test |  | 3d | 2027-09-06 | 2027-09-08 | 5.6 | 2027-03-01 | 2027-03-03 | 0d |  |
| 6.2 | Remove diversions |  | 3d | 2027-09-09 | 2027-09-11 | 6.1 | 2027-03-01 | 2027-03-03 | 0d |  |
| 6.3 | Clear site |  | 5d | 2027-09-13 | 2027-09-17 | 6.2 | 2027-03-01 | 2027-03-05 | 0d |  |
| 6.4 | Bridge open to traffic | milestone | 0d | 2027-09-18 | 2027-09-18 | 6.3 | 2027-03-01 | 2027-03-01 | 0d |  |
